| id | wbs | name | trade | phase | start | dur | rel | cost | ac | percent | status | restr | pred |
| --- | --- | --- | --- | --- | --- | --- | --- | --- | --- | --- | --- | --- | --- |
| 1 | 00.01 | Permisos y licencias | Arquitectura | Preconstrucción | 1 | 10 | FS | 350000 | 0 | 0 | Por liberar | 0 |  |
| 2 | 00.02 | Proyecto ejecutivo y coordinación | Arquitectura | Preconstrucción | 5 | 15 | FS | 900000 | 0 | 0 | Por liberar | 0 | 00.01 |
| 3 | 00.03 | Topografía y trazo | Arquitectura | Preconstrucción | 20 | 5 | FS | 120000 | 0 | 0 | Por liberar | 0 | 00.02 |
| 4 | 01.01 | Limpieza y despalme | Estructuras | Cimentación | 26 | 4 | FS | 180000 | 0 | 0 | Por liberar | 0 | 00.03 |
| 5 | 01.02 | Excavación general | Estructuras | Cimentación | 30 | 10 | FS | 950000 | 0 | 0 | Por liberar | 0 | 01.01 |
| 6 | 01.03 | Plantilla y nivelación | Estructuras | Cimentación | 40 | 5 | FS | 240000 | 0 | 0 | Por liberar | 0 | 01.02 |
| 7 | 01.04 | Cimentación (zapatas y dados) | Estructuras | Cimentación | 45 | 12 | FS | 2200000 | 0 | 0 | Por liberar | 0 | 01.03 |
| 8 | 01.05 | Muros de contención | Estructuras | Cimentación | 57 | 8 | FS | 1350000 | 0 | 0 | Por liberar | 0 | 01.04 |
| 9 | 01.06 | Relleno y compactación | Estructuras | Cimentación | 65 | 6 | FS | 420000 | 0 | 0 | Por liberar | 0 | 01.05 |
| 10 | 02.01 | Estructura nivel 1 (columnas/losas) | Estructuras | Estructura | 71 | 12 | FS | 1800000 | 0 | 0 | Por liberar | 0 | 01.06 |
| 11 | 02.02 | Estructura nivel 2 (columnas/losas) | Estructuras | Estructura | 83 | 12 | FS | 1800000 | 0 | 0 | Por liberar | 0 | 02.01 |
| 12 | 02.03 | Estructura nivel 3 (columnas/losas) | Estructuras | Estructura | 95 | 12 | FS | 1800000 | 0 | 0 | Por liberar | 0 | 02.02 |
| 13 | 02.04 | Estructura nivel 4 (columnas/losas) | Estructuras | Estructura | 107 | 12 | FS | 1800000 | 0 | 0 | Por liberar | 0 | 02.03 |
| 14 | 02.05 | Estructura nivel 5 (columnas/losas) | Estructuras | Estructura | 119 | 12 | FS | 1800000 | 0 | 0 | Por liberar | 0 | 02.04 |
| 15 | 02.06 | Azotea y pretiles | Estructuras | Estructura | 131 | 6 | FS | 600000 | 0 | 0 | Por liberar | 0 | 02.05 |
| 16 | 03.01 | Muros perimetrales | Arquitectura | Envolvente | 137 | 10 | FS | 1200000 | 0 | 0 | Por liberar | 0 | 02.06 |
| 17 | 03.02 | Ventanas y cancelería | Arquitectura | Envolvente | 147 | 12 | FS | 1800000 | 0 | 0 | Por liberar | 0 | 03.01 |
| 18 | 03.03 | Impermeabilización | Arquitectura | Envolvente | 159 | 6 | FS | 450000 | 0 | 0 | Por liberar | 0 | 03.02 |
| 19 | 04.01 | MEP rough-in nivel 1 | MEP | MEP | 120 | 10 | SS | 650000 | 0 | 0 | Por liberar | 0 | 02.02 |
| 20 | 04.02 | MEP rough-in nivel 2 | MEP | MEP | 132 | 10 | SS | 650000 | 0 | 0 | Por liberar | 0 | 02.03 |
| 21 | 04.03 | MEP rough-in nivel 3 | MEP | MEP | 144 | 10 | SS | 650000 | 0 | 0 | Por liberar | 0 | 02.04 |
| 22 | 04.04 | MEP rough-in nivel 4 | MEP | MEP | 156 | 10 | SS | 650000 | 0 | 0 | Por liberar | 0 | 02.05 |
| 23 | 04.05 | MEP rough-in nivel 5 | MEP | MEP | 168 | 10 | SS | 650000 | 0 | 0 | Por liberar | 0 | 02.06 |
| 24 | 04.06 | Tableros y canalizaciones eléctricas | Eléctrico | MEP | 140 | 12 | SS | 820000 | 0 | 0 | Por liberar | 0 | 04.01 |
| 25 | 04.07 | Tuberías sanitarias e hidráulicas | Plomería | MEP | 140 | 12 | SS | 780000 | 0 | 0 | Por liberar | 0 | 04.01 |
| 26 | 04.08 | Ductería y equipos HVAC | HVAC | MEP | 148 | 14 | SS | 1100000 | 0 | 0 | Por liberar | 0 | 04.01 |
| 27 | 05.01 | Muros divisorios nivel 1 | Interiores | Acabados | 150 | 8 | FS | 480000 | 0 | 0 | Por liberar | 0 | 04.01 |
| 28 | 05.02 | Muros divisorios nivel 2 | Interiores | Acabados | 158 | 8 | FS | 480000 | 0 | 0 | Por liberar | 0 | 04.02 |
| 29 | 05.03 | Muros divisorios nivel 3 | Interiores | Acabados | 166 | 8 | FS | 480000 | 0 | 0 | Por liberar | 0 | 04.03 |
| 30 | 05.04 | Muros divisorios nivel 4 | Interiores | Acabados | 174 | 8 | FS | 480000 | 0 | 0 | Por liberar | 0 | 04.04 |
| 31 | 05.05 | Muros divisorios nivel 5 | Interiores | Acabados | 182 | 8 | FS | 480000 | 0 | 0 | Por liberar | 0 | 04.05 |
| 32 | 05.06 | Aplanados y yesos | Interiores | Acabados | 160 | 12 | SS | 720000 | 0 | 0 | Por liberar | 0 | 05.01 |
| 33 | 05.07 | Pisos y recubrimientos | Interiores | Acabados | 172 | 12 | SS | 860000 | 0 | 0 | Por liberar | 0 | 05.02 |
| 34 | 05.08 | Cancelería interior | Arquitectura | Acabados | 180 | 8 | SS | 540000 | 0 | 0 | Por liberar | 0 | 05.03 |
| 35 | 05.09 | Pintura general | Arquitectura | Acabados | 188 | 10 | FS | 520000 | 0 | 0 | Por liberar | 0 | 05.06 |
| 36 | 05.10 | Carpinterías y muebles fijos | Interiores | Acabados | 196 | 10 | FS | 980000 | 0 | 0 | Por liberar | 0 | 05.07 |
| 37 | 05.11 | Equipamiento sanitario | Plomería | Acabados | 198 | 8 | FS | 420000 | 0 | 0 | Por liberar | 0 | 05.08 |
| 38 | 05.12 | Iluminación y dispositivos | Eléctrico | Acabados | 198 | 8 | FS | 600000 | 0 | 0 | Por liberar | 0 | 05.08 |
| 39 | 06.01 | Accesos y banquetas | Estructuras | Exteriores | 170 | 10 | FS | 580000 | 0 | 0 | Por liberar | 0 | 03.01 |
| 40 | 06.02 | Fachadas y pintura exterior | Arquitectura | Exteriores | 175 | 12 | FS | 820000 | 0 | 0 | Por liberar | 0 | 03.02 |
| 41 | 06.03 | Urbanización y landscaping | Landscape | Exteriores | 185 | 12 | FS | 520000 | 0 | 0 | Por liberar | 0 | 06.01 |
| 42 | 07.01 | Pruebas y commissioning | MEP | Cierre | 200 | 6 | FS | 260000 | 0 | 0 | Por liberar | 0 | 05.12 |
| 43 | 07.02 | Entrega final y cierre | Arquitectura | Cierre | 206 | 4 | FS | 120000 | 0 | 0 | Por liberar | 0 | 07.01 |
